"WBS","Outline Level","Name","Work","Resource Names","Start","Finish","Text1","% Complete"
"1","1","Quản lý dự án","37h","","30/11/2026","29/01/2027","Sprint 0-4","0"
"1.1","2","Project Charter","4h","Đạt","30/11/2026","06/12/2026","Sprint 0","100"
"1.2","2","WBS và ước lượng","4h","Đạt","30/11/2026","06/12/2026","Sprint 0","100"
"1.3","2","Lịch MS Project, đường găng","4h","Đức","30/11/2026","06/12/2026","Sprint 0","0"
"1.4","2","Kế hoạch chi phí, EVM giữa và cuối kỳ","6h","Đạt","21/12/2026","29/01/2027","Sprint 2-4","0"
"1.5","2","Sổ rủi ro, cập nhật hằng sprint","4h","Đức","07/12/2026","29/01/2027","Sprint 1-4","0"
"1.6","2","Kế hoạch truyền thông, biên bản họp","6h","Đức","30/11/2026","29/01/2027","Sprint 0-4","0"
"1.7","2","Backlog Jira, báo cáo sprint","6h","Đức","30/11/2026","29/01/2027","Sprint 0-4","0"
"1.8","2","Phân tích làm hay mua (LLM, thư viện PDF)","3h","Đạt","21/12/2026","03/01/2027","Sprint 2","0"
"2","1","Phân tích yêu cầu","15h","","30/11/2026","20/12/2026","Sprint 0-1","0"
"2.1","2","Đặc tả yêu cầu, user story","6h","Đức","30/11/2026","06/12/2026","Sprint 0","0"
"2.2","2","Use case, quy trình nghiệp vụ","6h","Đức","07/12/2026","20/12/2026","Sprint 1","0"
"2.3","2","Dữ liệu mẫu: sảnh, thực đơn, dịch vụ, giá","3h","Đức","07/12/2026","20/12/2026","Sprint 1","0"
"3","1","Thiết kế","22h","","30/11/2026","03/01/2027","Sprint 0-2","0"
"3.1","2","Kiến trúc hệ thống","2h","Đạt","30/11/2026","06/12/2026","Sprint 0","100"
"3.2","2","Thiết kế CSDL","4h","Đạt","30/11/2026","06/12/2026","Sprint 0","0"
"3.3","2","Thiết kế API","3h","Đạt","07/12/2026","20/12/2026","Sprint 1","0"
"3.4","2","Mockup giao diện (Figma)","10h","Đức","07/12/2026","03/01/2027","Sprint 1-2","0"
"3.5","2","Thiết kế chatbot: tool, prompt","3h","Đạt","21/12/2026","03/01/2027","Sprint 2","0"
"4","1","Lịch sảnh theo ca","11h","","07/12/2026","20/12/2026","Sprint 1","100"
"4.1","2","API giữ, hủy sảnh, chống trùng","6h","Đạt","07/12/2026","20/12/2026","Sprint 1","100"
"4.2","2","Màn hình lịch sảnh","5h","Đạt","07/12/2026","20/12/2026","Sprint 1","100"
"5","1","Thực đơn, dịch vụ, báo giá","22h","","07/12/2026","03/01/2027","Sprint 1-2","0"
"5.1","2","API thực đơn, dịch vụ","5h","Đạt","07/12/2026","20/12/2026","Sprint 1","0"
"5.2","2","API báo giá","6h","Đạt","07/12/2026","20/12/2026","Sprint 1","0"
"5.3","2","Màn hình thực đơn, dịch vụ","5h","Đức","07/12/2026","20/12/2026","Sprint 1","0"
"5.4","2","Màn hình báo giá","6h","Đức","21/12/2026","03/01/2027","Sprint 2","0"
"6","1","Hợp đồng, đặt cọc","19h","","21/12/2026","17/01/2027","Sprint 2-3","0"
"6.1","2","API hợp đồng, đặt cọc","8h","Đạt","21/12/2026","03/01/2027","Sprint 2","0"
"6.2","2","Màn hình hợp đồng","6h","Đức","21/12/2026","03/01/2027","Sprint 2","0"
"6.3","2","Mẫu và xuất hợp đồng PDF","5h","Đức","04/01/2027","17/01/2027","Sprint 3","0"
"7","1","Thanh lý và báo cáo","16h","","04/01/2027","17/01/2027","Sprint 3","0"
"7.1","2","API thanh lý hợp đồng","5h","Đạt","04/01/2027","17/01/2027","Sprint 3","0"
"7.2","2","Màn hình thanh lý","4h","Đức","04/01/2027","17/01/2027","Sprint 3","0"
"7.3","2","Báo cáo doanh thu mùa cưới","7h","Đạt","04/01/2027","17/01/2027","Sprint 3","0"
"8","1","Chatbot AI","20h","","04/01/2027","29/01/2027","Sprint 3-4","0"
"8.1","2","Tích hợp Claude API, tra lịch và báo giá","8h","Đạt","04/01/2027","17/01/2027","Sprint 3","0"
"8.2","2","Tool calling: giữ sảnh, tạo báo giá nháp","8h","Đạt","18/01/2027","29/01/2027","Sprint 4","0"
"8.3","2","Màn hình chat trong app","4h","Đức","04/01/2027","17/01/2027","Sprint 3","0"
"9","1","Nhắc thanh toán (mức Tốt)","4h","","18/01/2027","29/01/2027","Sprint 4","0"
"9.1","2","Nhắc thanh toán các đợt còn nợ","4h","Đạt","18/01/2027","29/01/2027","Sprint 4","0"
"10","1","Kiểm thử","18h","","21/12/2026","29/01/2027","Sprint 2-4","0"
"10.1","2","Unit test","6h","Đạt","21/12/2026","29/01/2027","Sprint 2-4","0"
"10.2","2","Test case, kiểm thử tích hợp","8h","Đức","21/12/2026","29/01/2027","Sprint 2-4","0"
"10.3","2","Kiểm thử chấp nhận (UAT)","4h","Đức","18/01/2027","29/01/2027","Sprint 4","0"
"11","1","Triển khai","9h","","21/12/2026","29/01/2027","Sprint 2-4","0"
"11.1","2","Triển khai API và CSDL lên máy chủ","5h","Đạt","21/12/2026","03/01/2027","Sprint 2","0"
"11.2","2","Đóng gói bộ cài Windows","4h","Đạt","18/01/2027","29/01/2027","Sprint 4","0"
"12","1","Kết thúc dự án","12h","","18/01/2027","29/01/2027","Sprint 4","0"
"12.1","2","Hướng dẫn sử dụng","4h","Đức","18/01/2027","29/01/2027","Sprint 4","0"
"12.2","2","Slide và kịch bản demo","4h","Đức","18/01/2027","29/01/2027","Sprint 4","0"
"12.3","2","Báo cáo tổng kết, bài học kinh nghiệm","4h","Đạt, Đức","18/01/2027","29/01/2027","Sprint 4","0"
